# POWER-MARKETING

Schedule from MS Project, 2019-02-20 to 2020-01-03, costs in zł, A marks actual dates.

## Calendars

- Standard: Mon-Fri 09:00-17:00; Sat-Sun off. Exceptions (off unless hours are given): 2019-04-22 (1 dzień świąt wielkanocnych), 2019-05-01 (1 maj), 2019-05-03 (3 maj), 2019-06-20 (Boże Ciało), 2019-08-15 (15 sierpnia), 2019-11-01 (1 listopada), 2019-11-11 (11 listopada), 2019-12-25 (25 grudnia), 2019-12-26 (26 grudnia), 2020-01-01 (Nowy Rok).

## Resources

| Resource | Group | Rate |
| --- | --- | --- |
| Project Manager | Stałe | 70 |
| Grafik | Stałe | 35 |
| Front-end Developer | Stałe | 45 |
| Back-end Developer | Stałe | 52 |
| Tester | Stałe | 27 |
| Social Media Specialist | Stałe | 40 |
| Analityk E-Commerce | Stałe | 50 |
| Szkolenie | Jednorazowe |  |
| Oprogramowanie I Licencje | jednorazowe |  |
| IT Service | Internal | 30 |
| Firma wdrażająca chmure | External |  |
| utrzymania serwerów w chmurze | stałe |  |
| System Architect | Stałe | 65 |

## Schedule

| ID | WBS | Task | Type | Duration | Start | Finish | Predecessors | Complete | Remaining | Baseline start | Baseline finish | Baseline duration | Total slack | Deadline | Resources | Work | Actual work | Cost | Baseline cost | Actual cost |
| --- | --- | --- | --- | --- | --- | --- | --- | --- | --- | --- | --- | --- | --- | --- | --- | --- | --- | --- | --- | --- |
| 1 | 1 | **Etap I – Analiza** |  | 20d | 2019-02-20 A | 2019-03-19 |  | 71% | 5.88d | 2019-02-20 | 2019-03-19 | 20d | 0d |  |  | 512h | 192h | 27,760 | 27,760 | 9,760 |
| 2 | 1.1 | Opracowanie głównych potrzeb klienckich |  | 10d | 2019-02-20 A | 2019-03-05 A |  | 100% |  | 2019-02-20 | 2019-03-05 | 10d |  |  | Analityk E-Commerce [50%]; Social Media Specialist [50%] | 80h | 80h | 3,600 | 3,600 | 3,600 |
| 3 | 1.2 | Przygotowanie raportu trendów konsumenckich w różnych kanałach sprzedażowych |  | 7d | 2019-02-20 A | 2019-02-28 A | 2SS | 100% |  | 2019-02-20 | 2019-02-28 | 7d |  |  | Social Media Specialist [50%] | 28h | 28h | 1,120 | 1,120 | 1,120 |
| 4 | 1.3 | Przygotowanie analizy możliwości technologicznej realizacji potrzeb |  | 7d | 2019-02-20 A | 2019-02-28 A | 3SS | 100% |  | 2019-02-20 | 2019-02-28 | 7d |  |  | Analityk E-Commerce [50%]; System Architect | 84h | 84h | 5,040 | 5,040 | 5,040 |
| 5 | 1.4 | Opracowanie i przygotowanie dokumentu wymagań |  | 10d | 2019-03-06 | 2019-03-19 | 2 |  |  | 2019-03-06 | 2019-03-19 | 10d | 0d |  | System Architect; Project Manager; Analityk E-Commerce; Social Media Specialist | 320h |  | 18,000 | 18,000 |  |
| 6 | 1.5 | Protokół odbioru etapu I | milestone | 0d | 2019-03-19 | 2019-03-19 | 5 |  |  | 2019-03-19 | 2019-03-19 | 0d | 0d | 2019-03-25 | Project Manager |  |  |  |  |  |
| 7 | 2 | **Etap II – Projektowanie** |  | 28d | 2019-03-20 | 2019-04-29 | 6 |  |  | 2019-03-20 | 2019-04-29 | 28d | 0d |  |  | 632h |  | 33,360 | 33,360 |  |
| 8 | 2.1 | Przygotowanie szkicu dokumentu projektu systemu |  | 10d | 2019-03-20 | 2019-04-02 |  |  |  | 2019-03-20 | 2019-04-02 | 10d | 0d |  | System Architect; Back-end Developer [200%] | 160h |  | 9,360 | 9,360 |  |
| 9 | 2.2 | Konsultacje z projektantami integrowanych systemów |  | 3d | 2019-03-29 | 2019-04-02 | 8FF |  |  | 2019-03-29 | 2019-04-02 | 3d | 0d |  | Project Manager | 24h |  | 1,680 | 1,680 |  |
| 10 | 2.3 | Przygotowanie zestawu szkiców designu i interfejsu systemu (platformy oraz narzędzi) |  | 8d | 2019-04-03 | 2019-04-12 | 9 |  |  | 2019-04-03 | 2019-04-12 | 8d | 0d |  | Grafik; Front-end Developer | 128h |  | 5,120 | 5,120 |  |
| 11 | 2.4 | Przygotowanie dokumentu projektu systemu |  | 10d | 2019-04-15 | 2019-04-29 | 10 |  |  | 2019-04-15 | 2019-04-29 | 10d | 0d |  | Grafik; System Architect; Project Manager; Front-end Developer | 320h |  | 17,200 | 17,200 |  |
| 12 | 2.5 | Protokół odbioru etapu II | milestone | 0d | 2019-04-29 | 2019-04-29 | 11 |  |  | 2019-04-29 | 2019-04-29 | 0d | 0d | 2019-05-13 | Project Manager |  |  |  |  |  |
| 13 | 3 | **Etap III - Instalacja i konfiguracja środowiska** |  | 7d | 2019-04-30 | 2019-05-10 | 12 |  |  | 2019-04-30 | 2019-05-10 | 7d | 0d |  |  | 56h |  | 9,680 | 9,680 |  |
| 14 | 3.1 | Zapewnienie środowiska sprzętowego |  | 1d | 2019-04-30 | 2019-04-30 |  |  |  | 2019-04-30 | 2019-04-30 | 1d | 0d |  | IT Service | 8h |  | 240 | 240 |  |
| 15 | 3.2 | Zapewnienie środowisk operacyjnych |  | 1d | 2019-05-02 | 2019-05-02 | 14 |  |  | 2019-05-02 | 2019-05-02 | 1d | 0d |  | IT Service; Oprogramowanie I Licencje [0.1%] | 8h |  | 2,240 | 2,240 |  |
| 16 | 3.3 | Zapewnienie środowisk narzędziowych |  | 1d | 2019-05-06 | 2019-05-06 | 15 |  |  | 2019-05-06 | 2019-05-06 | 1d | 0d |  | IT Service; Oprogramowanie I Licencje [0.1%] | 8h |  | 6,240 | 6,240 |  |
| 17 | 3.4 | Instalacja i konfiguracja środowisk |  | 4d | 2019-05-07 | 2019-05-10 | 16 |  |  | 2019-05-07 | 2019-05-10 | 4d | 0d |  | IT Service | 32h |  | 960 | 960 |  |
| 18 | 3.5 | Protokół odbioru etapu III | milestone | 0d | 2019-05-10 | 2019-05-10 | 17 |  |  | 2019-05-10 | 2019-05-10 | 0d | 0d | 2019-05-15 | Project Manager |  |  |  |  |  |
| 19 | 4 | **Etap IV – Implementacja i testowanie** |  | 133d | 2019-05-13 | 2019-11-19 | 18 |  |  | 2019-05-13 | 2019-11-19 | 133d | 0d |  |  | 3172h |  | 150,468 | 150,468 |  |
| 20 | 4.1 | Przedstawienie etapów działań poszczególnych członków zespołu |  | 1d | 2019-05-13 | 2019-05-13 |  |  |  | 2019-05-13 | 2019-05-13 | 1d | 0d |  | Project Manager | 8h |  | 560 | 560 |  |
| 21 | 4.2 | Stworzenie Planu Pracy i przyporządkowanie realizacji zadań poszczególnym członkom zespołu |  | 12d | 2019-05-14 | 2019-05-29 | 20 |  |  | 2019-05-14 | 2019-05-29 | 12d | 0d |  | Project Manager | 96h |  | 6,720 | 6,720 |  |
| 22 | 4.3 | Implementacja podstawowej struktury projektu |  | 15d | 2019-05-30 | 2019-06-19 | 21 |  |  | 2019-05-30 | 2019-06-19 | 15d | 0d |  | System Architect [50%]; Back-end Developer | 180h |  | 10,140 | 10,140 |  |
| 23 | 4.4 | Implementacja struktury bazy danych |  | 10d | 2019-05-30 | 2019-06-12 | 22SS |  |  | 2019-05-30 | 2019-06-12 | 10d | 140d |  | System Architect [50%]; Back-end Developer | 120h |  | 6,760 | 6,760 |  |
| 24 | 4.5 | Implementacja narzędzi automatyzujących platformy |  | 20d | 2019-06-21 | 2019-07-18 | 22 |  |  | 2019-06-21 | 2019-07-18 | 20d | 0d |  | Back-end Developer [200%] | 320h |  | 16,640 | 16,640 |  |
| 25 | 4.6 | Implementacja logiki biznesowej |  | 25d | 2019-07-19 | 2019-08-23 | 24 |  |  | 2019-07-19 | 2019-08-23 | 25d | 0d |  | Back-end Developer | 200h |  | 10,400 | 10,400 |  |
| 26 | 4.7 | Implementacja logiki aplikacji |  | 28d | 2019-07-19 | 2019-08-28 | 25SS |  |  | 2019-07-19 | 2019-08-28 | 28d | 87d |  | Back-end Developer | 224h |  | 11,648 | 11,648 |  |
| 27 | 4.8 | Implementacja front-endu I wygladu platformy |  | 40d | 2019-07-09 | 2019-09-03 | 24FS-4% |  |  | 2019-07-09 | 2019-09-03 | 40d | 83d |  | Front-end Developer; Grafik | 640h |  | 25,600 | 25,600 |  |
| 28 | 4.9 | Przygotowanie scenariuszy testowych |  | 10d | 2019-07-26 | 2019-08-08 | 25SS+5d |  |  | 2019-07-26 | 2019-08-08 | 10d | 0d |  | Tester | 80h |  | 2,160 | 2,160 |  |
| 29 | 4.10 | Implementacja automatycznych testów |  | 20d | 2019-08-09 | 2019-09-06 | 28 |  |  | 2019-08-09 | 2019-09-06 | 20d | 0d |  | Tester; System Architect | 320h |  | 14,720 | 14,720 |  |
| 30 | 4.11 | Przeprowadzenie testów |  | 8d | 2019-09-09 | 2019-09-18 | 29 |  |  | 2019-09-09 | 2019-09-18 | 8d | 0d |  | Tester | 64h |  | 1,728 | 1,728 |  |
| 31 | 4.12 | Wprowadzenie poprawek |  | 42d | 2019-09-19 | 2019-11-19 | 30 |  |  | 2019-09-19 | 2019-11-19 | 42d | 0d |  | Back-end Developer; Front-end Developer [50%]; Grafik | 672h |  | 30,912 | 30,912 |  |
| 32 | 4.13 | Refaktoryzacja kodu |  | 20d | 2019-09-19 | 2019-10-16 | 31SS |  |  | 2019-09-19 | 2019-10-16 | 20d | 0d |  | Back-end Developer; Front-end Developer [50%] | 240h |  | 11,920 | 11,920 |  |
| 33 | 4.14 | Prezentacja platformy |  | 1d | 2019-10-17 | 2019-10-17 | 32 |  |  | 2019-10-17 | 2019-10-17 | 1d | 0d |  | Project Manager | 8h |  | 560 | 560 |  |
| 34 | 4.15 | Protokół odbioru etapu IV | milestone | 0d | 2019-10-17 | 2019-10-17 | 33 |  |  | 2019-10-17 | 2019-10-17 | 0d | 0d | 2019-11-29 | Project Manager |  |  |  |  |  |

| ID | WBS | Task | Type | Duration | Start | Finish | Predecessors | Baseline start | Baseline finish | Baseline duration | Total slack | Deadline | Resources | Work | Cost | Baseline cost |
| --- | --- | --- | --- | --- | --- | --- | --- | --- | --- | --- | --- | --- | --- | --- | --- | --- |
| 35 | 5 | **Etap V – Wdrożenie** |  | 41d | 2019-10-18 | 2019-12-17 | 34 | 2019-10-18 | 2019-12-17 | 41d | 0d |  |  | 304h | 42,668 | 42,668 |
| 36 | 5.1 | Konfiguracja środowiska serwera w chmurze obliczeniowej |  | 15d | 2019-10-18 | 2019-11-08 |  | 2019-10-18 | 2019-11-08 | 15d | 0d |  | Firma wdrażająca chmure [0.1%] |  | 20,000 | 20,000 |
| 37 | 5.2 | Wdrożenie tworzonego systemu platformy |  | 6d | 2019-10-31 | 2019-11-08 | 36FF | 2019-10-31 | 2019-11-08 | 6d | 0d |  | System Architect; Back-end Developer; utrzymania serwerów w chmurze [0.1%] | 96h | 8,116 | 8,116 |
| 38 | 5.3 | Integracja systemu z Produkcyjnymi bazami danych |  | 8d | 2019-11-12 | 2019-11-21 | 37 | 2019-11-12 | 2019-11-21 | 8d | 0d |  | Back-end Developer | 64h | 3,328 | 3,328 |
| 39 | 5.4 | Przeprowadzenie testów produkcyjnych |  | 12d | 2019-11-22 | 2019-12-09 | 38 | 2019-11-22 | 2019-12-09 | 12d | 0d |  | Tester | 96h | 2,592 | 2,592 |
| 40 | 5.5 | Stworzenie raportu z procesu testowania |  | 2d | 2019-12-10 | 2019-12-11 | 39 | 2019-12-10 | 2019-12-11 | 2d | 0d |  | Tester; Project Manager | 32h | 1,552 | 1,552 |
| 41 | 5.6 | Stworzenie instrukcji obsługi |  | 1d | 2019-12-12 | 2019-12-12 | 40 | 2019-12-12 | 2019-12-12 | 1d | 0d |  | Project Manager; System Architect | 16h | 1,080 | 1,080 |
| 42 | 5.7 | Przeszkolenie pracowników |  | 3d | 2019-12-13 | 2019-12-17 | 41 | 2019-12-13 | 2019-12-17 | 3d | 0d |  | Szkolenie [0.1%] |  | 6,000 | 6,000 |
| 43 | 5.8 | Protokół odbioru etapu V | milestone | 0d | 2019-12-17 | 2019-12-17 | 42 | 2019-12-17 | 2019-12-17 | 0d | 0d | 2020-01-20 | Project Manager |  |  |  |
| 44 | 6 | **Etap VI – Przygotowanie dokumentacji** |  | 10d | 2019-12-18 | 2020-01-03 | 43 | 2019-12-18 | 2020-01-03 | 10d | 0d |  |  | 320h | 18,560 | 18,560 |
| 45 | 6.1 | Przygotowanie dokumentu projektu systemu |  | 10d | 2019-12-18 | 2020-01-03 |  | 2019-12-18 | 2020-01-03 | 10d | 0d |  | Front-end Developer; Back-end Developer [200%]; System Architect; Project Manager | 320h | 18,560 | 18,560 |
| 46 | 6.2 | Protokół odbioru etapu VI | milestone | 0d | 2020-01-03 | 2020-01-03 | 45 | 2020-01-03 | 2020-01-03 | 0d | 0d | 2020-02-21 | Project Manager |  |  |  |
